# Cronograma_VR_Bateria.xml

Schedule from MS Project XML, 2026-09-07 to 2026-10-23.

## Calendars

- Diana — Director de proyecto: Mon-Fri 08:00-12:00, 13:00-17:00; Sat-Sun off. Exceptions (off unless hours are given): 2026-09-16 to 2026-09-22.

## Resources

| Resource | Group | Rate | Notes |
| --- | --- | --- | --- |
| Unassigned |  |  |  |
| Benjamín — Desarrollador de gameplay | Juego de ritmo | 59.07 | 1.5 salarios mínimos por hora. Tarifa base: $39.38/h. |
| Kimberly — Artista y modelador 3D | Entorno 3D y assets | 51.19 | 1.3 salarios mínimos por hora. Tarifa base: $39.38/h. |
| Sarai — Diseñador de interacción UX-XR | Interfaz / UX/UI | 51.19 | 1.3 salarios mínimos por hora. Tarifa base: $39.38/h. |
| Misael — Desarrollador de realidad virtual | Desarrollo VR y batería | 59.07 | 1.5 salarios mínimos por hora. Tarifa base: $39.38/h. |
| María — Analista e investigador | Experiencia emocional | 51.19 | 1.3 salarios mínimos por hora. Tarifa base: $39.38/h. |
| Javier — Compositor y diseñador musical | Música | 47.26 | 1.2 salarios mínimos por hora. Tarifa base: $39.38/h. |
| Christian — Diseñador de audio | Sonido | 47.26 | 1.2 salarios mínimos por hora. Tarifa base: $39.38/h. |
| Diana — Gerente de proyecto | QA, documentación y gestión | 70.88 | 1.8 salarios mínimos por hora. Tarifa base: $39.38/h. |
| Diana — Analista e investigador | QA, documentación y gestión | 51.19 | 1.3 salarios mínimos por hora. Tarifa base: $39.38/h. |
| Diana — Analista de pruebas (QA) | QA, documentación y gestión | 43.32 | 1.1 salarios mínimos por hora. Tarifa base: $39.38/h. |
| Diana — Redactor técnico | QA, documentación y gestión | 39.38 | 1.0 salarios mínimos por hora. Tarifa base: $39.38/h. |
| Diana — Desarrollador de realidad virtual | QA, documentación y gestión | 59.07 | 1.5 salarios mínimos por hora. Tarifa base: $39.38/h. |
| Diana — Director de proyecto | QA, documentación y gestión | 86.64 | 2.2 salarios mínimos por hora. Tarifa base: $39.38/h. |

## Schedule

| ID | WBS | Task | Duration | Start | Finish | Predecessors | Complete | Constraint | Resources |
| --- | --- | --- | --- | --- | --- | --- | --- | --- | --- |
| 1 | 1 | **D. Desarrollo VR y batería** | 8.38d | 2026-09-07 | 2026-09-22 |  | 82% |  |  |
| 2 | 1.1 | DP.1 — Crear el proyecto base en Unity y definir la versión que utilizará todo el equipo | 0.38d | 2026-09-07 | 2026-09-07 |  | 100% |  | Misael — Desarrollador de realidad virtual |
| 3 | 1.2 | DP.2 — Configurar repositorio y estructura inicial de carpetas del proyecto | 0.38d | 2026-09-07 | 2026-09-07 | 2 | 100% |  | Misael — Desarrollador de realidad virtual |
| 4 | 1.3 | DP.3 — Configurar control de versiones y reglas para evitar conflictos entre desarrolladores | 0.62d | 2026-09-07 | 2026-09-08 | 3 | 100% |  | Misael — Desarrollador de realidad virtual |
| 5 | 1.4 | DX.1 — Instalar y configurar paquetes XR necesarios para realidad virtual | 0.62d | 2026-09-07 | 2026-09-07 | 2 | 100% |  | Misael — Desarrollador de realidad virtual |
| 6 | 1.5 | DX.2 — Configurar OpenXR y compatibilidad con el visor VR seleccionado | 0.62d | 2026-09-08 | 2026-09-08 | 5 | 100% |  | Misael — Desarrollador de realidad virtual |
| 7 | 1.6 | DX.3 — Crear escena técnica inicial para realizar pruebas de VR | 0.38d | 2026-09-08 | 2026-09-08 | 6 | 100% |  | Misael — Desarrollador de realidad virtual |
| 8 | 1.7 | DX.4 — Configurar XR Origin, cámara y seguimiento de cabeza | 0.5d | 2026-09-09 | 2026-09-09 | 7 | 100% |  | Misael — Desarrollador de realidad virtual |
| 9 | 1.8 | DX.5 — Configurar seguimiento de los controles derecho e izquierdo | 0.5d | 2026-09-09 | 2026-09-09 | 8 | 100% | start no later than 2026-09-09 | Misael — Desarrollador de realidad virtual |
| 10 | 1.9 | DX.6 — Comprobar escala, altura y posición del jugador dentro del entorno VR | 0.5d | 2026-09-09 | 2026-09-09 | 8 | 100% | start no later than 2026-09-09 | Misael — Desarrollador de realidad virtual |
| 11 | 1.10 | DO — Implementar sistema para agarrar y soltar objetos con los controles | 1d | 2026-09-10 | 2026-09-10 | 9 |  |  | Misael — Desarrollador de realidad virtual |
| 12 | 1.11 | DB.1 — Crear versión provisional de las baquetas para pruebas | 0.38d | 2026-09-09 | 2026-09-09 | 7 | 100% |  | Misael — Desarrollador de realidad virtual |
| 13 | 1.12 | DB.2 — Configurar las baquetas como objetos interactuables | 0.38d | 2026-09-11 | 2026-09-11 | 11, 12 |  |  | Misael — Desarrollador de realidad virtual |
| 14 | 1.13 | DB.3 — Ajustar posición de agarre de cada baqueta en los controles VR | 0.75d | 2026-09-11 | 2026-09-14 | 13 | 100% |  | Misael — Desarrollador de realidad virtual |
| 15 | 1.14 | DT.1 — Crear batería provisional con objetos simples para comenzar pruebas | 0.62d | 2026-09-09 | 2026-09-09 | 7 | 100% |  | Misael — Desarrollador de realidad virtual |
| 16 | 1.15 | DT.2 — Definir todos los componentes interactivos de la batería: snare, kick, toms, hi-hat, crash y ride | 0.75d | 2026-09-09 | 2026-09-10 | 15 | 100% |  | Misael — Desarrollador de realidad virtual |
| 17 | 1.16 | DT.3 — Configurar colliders para cada componente de la batería | 1d | 2026-09-10 | 2026-09-11 | 16 |  |  | Misael — Desarrollador de realidad virtual |
| 18 | 1.17 | DG.1 — Crear sistema general de detección de golpe entre baqueta y batería | 1d | 2026-09-11 | 2026-09-14 | 13, 17 | 100% |  | Misael — Desarrollador de realidad virtual |
| 19 | 1.18 | DG.2 — Identificar automáticamente qué pieza de la batería fue golpeada | 1d | 2026-09-14 | 2026-09-15 | 18 | 100% |  | Misael — Desarrollador de realidad virtual |
| 20 | 1.19 | DG.3 — Detectar velocidad de movimiento de la baqueta antes del impacto | 1d | 2026-09-14 | 2026-09-15 | 18 | 100% |  | Misael — Desarrollador de realidad virtual |
| 21 | 1.20 | DG.4 — Convertir la velocidad de la baqueta en un valor de intensidad de golpe | 1d | 2026-09-15 | 2026-09-16 | 20 | 100% |  | Misael — Desarrollador de realidad virtual |
| 22 | 1.21 | DG.5 — Establecer niveles de intensidad suave, media y fuerte | 0.75d | 2026-09-16 | 2026-09-17 | 21 | 100% |  | Misael — Desarrollador de realidad virtual |
| 23 | 1.22 | DG.6 — Implementar sistema para evitar golpes duplicados provocados por una misma colisión | 1d | 2026-09-14 | 2026-09-15 | 18 | 100% |  | Misael — Desarrollador de realidad virtual |
| 24 | 1.23 | DH.1 — Configurar vibración háptica del controlador al golpear la batería | 0.75d | 2026-09-14 | 2026-09-15 | 18 | 100% |  | Misael — Desarrollador de realidad virtual |
| 25 | 1.24 | DH.2 — Ajustar la intensidad háptica de acuerdo con la fuerza del golpe | 0.75d | 2026-09-16 | 2026-09-17 | 21, 24 | 100% |  | Misael — Desarrollador de realidad virtual |
| 26 | 1.25 | DG.7 — Crear evento general DrumHit que informe instrumento, intensidad y tiempo del golpe | 1d | 2026-09-16 | 2026-09-17 | 19, 21 | 100% |  | Misael — Desarrollador de realidad virtual |
| 27 | 1.26 | DG.8 — Implementar soporte independiente para golpe con baqueta izquierda y derecha | 0.75d | 2026-09-17 | 2026-09-18 | 26 | 100% |  | Misael — Desarrollador de realidad virtual |
| 28 | 1.27 | DB.4 — Ajustar física de las baquetas para evitar vibraciones o movimientos extraños | 0.75d | 2026-09-14 | 2026-09-15 | 18 |  |  | Misael — Desarrollador de realidad virtual |
| 29 | 1.28 | DG.9 — Ajustar sensibilidad de las colisiones de batería | 1d | 2026-09-15 | 2026-09-16 | 28 | 100% |  | Misael — Desarrollador de realidad virtual |
| 30 | 1.29 | DT.4 — Incorporar modelo 3D definitivo de la batería | 1d | 2026-09-18 | 2026-09-18 | 186, 29, 188 |  |  | Misael — Desarrollador de realidad virtual |
| 31 | 1.30 | DT.5 — Reconfigurar colliders utilizando el modelo definitivo | 0.38d | 2026-09-07 | 2026-09-07 | 30 |  |  | Misael — Desarrollador de realidad virtual |
| 32 | 1.31 | DT.6 — Ajustar posición y dimensiones de batería para una postura cómoda en VR | 0.62d | 2026-09-14 | 2026-09-14 | 31, 87 | 100% |  | Misael — Desarrollador de realidad virtual |
| 33 | 1.32 | DR.1 — Realizar primera prueba completa de interacción física de la batería | 1.12d | 2026-09-18 | 2026-09-21 | 32, 4, 10, 14, 23, 25, 27, 185 | 100% |  | Misael — Desarrollador de realidad virtual |
| 34 | 1.33 | DR.2 — Corregir errores detectados durante la primera prueba de batería | 1.12d | 2026-09-21 | 2026-09-22 | 33 | 100% |  | Misael — Desarrollador de realidad virtual |

Notes:
- 11: [FUERA DE ALCANCE] Agarrar y soltar objetos. Misma decisión del acta
- 13: [FUERA DE ALCANCE] Baquetas interactuables. Van solidarias al control, decisión del acta
- 17: [FUERA DE ALCANCE] Colliders por componente. La detección es por plano armado
- 28: [FUERA DE ALCANCE] Física de baquetas. No hay física que ajustar
- 30: [FUERA DE ALCANCE] Incorporar el modelo 3D definitivo. Su insumo era el modelado de la batería (AB.1 a AB.6), que este mismo recorte retiró: el área de entorno dejó de modelar y pasó a integrar assets libres. El kit de primitivas ya funciona y está medido, que es el argumento con el que se cortó AB.1. Mantenerla viva prometía un modelo que nadie iba a entregar
- 31: [FUERA DE ALCANCE] Reajustar los planos de golpe a ese modelo. Sin DT.4 no hay modelo nuevo al que reajustar nada; los planos actuales son los que están medidos y validados

| ID | WBS | Task | Duration | Start | Finish | Predecessors | Complete | Constraint | Resources |
| --- | --- | --- | --- | --- | --- | --- | --- | --- | --- |
| 35 | 2 | **J. Juego de ritmo** | 14.88d | 2026-09-07 | 2026-10-01 |  | 43% |  |  |
| 36 | 2.1 | JA.1 — Definir técnicamente cómo funcionará el juego de ritmo | 1d | 2026-09-07 | 2026-09-07 |  | 100% |  | Benjamín — Desarrollador de gameplay |
| 37 | 2.2 | JA.2 — Definir los datos necesarios para representar una nota musical dentro del juego | 0.38d | 2026-09-08 | 2026-09-08 | 36 | 100% |  | Benjamín — Desarrollador de gameplay |
| 38 | 2.3 | JA.3 — Diseñar estructura de datos para canciones y beatmaps | 1d | 2026-09-08 | 2026-09-09 | 37 | 100% |  | Benjamín — Desarrollador de gameplay |
| 39 | 2.4 | JT.1 — Crear sistema de reloj musical independiente de los FPS | 1d | 2026-09-08 | 2026-09-08 | 36 | 100% |  | Benjamín — Desarrollador de gameplay |
| 40 | 2.5 | JT.2 — Implementar cálculo de BPM y duración de cada beat | 0.38d | 2026-09-09 | 2026-09-09 | 39 | 100% |  | Benjamín — Desarrollador de gameplay |
| 41 | 2.6 | JT.3 — Implementar cálculo de compases y subdivisiones rítmicas | 1d | 2026-09-09 | 2026-09-10 | 40 | 100% |  | Benjamín — Desarrollador de gameplay |
| 42 | 2.7 | JK — Crear sistema provisional de golpes utilizando teclado para desarrollar sin depender del VR | 1d | 2026-09-08 | 2026-09-09 | 37 |  |  | Benjamín — Desarrollador de gameplay |
| 43 | 2.8 | JB.1 — Crear prototipo de beatmap manual | 0d | 2026-09-09 | 2026-09-09 | 38 | 100% |  | Benjamín — Desarrollador de gameplay |
| 44 | 2.9 | JB.2 — Crear sistema que cargue un beatmap | 0d | 2026-09-09 | 2026-09-09 | 38 | 100% |  | Benjamín — Desarrollador de gameplay |
| 45 | 2.10 | JB.3 — Sincronizar beatmap con reproducción de música | 0.75d | 2026-09-09 | 2026-09-10 | 39, 44, 43 | 100% |  | Benjamín — Desarrollador de gameplay |
| 46 | 2.11 | JN.1 — Crear representación visual provisional de las notas | 0.25d | 2026-09-10 | 2026-09-10 | 45 | 100% |  | Benjamín — Desarrollador de gameplay |
| 47 | 2.12 | JN.2 — Crear sistema que indique qué componente de la batería debe golpearse | 0.5d | 2026-09-10 | 2026-09-11 | 46 | 100% |  | Benjamín — Desarrollador de gameplay |
| 48 | 2.13 | JW.1 — Definir ventanas temporales Perfect, Good y Miss | 0.25d | 2026-09-10 | 2026-09-10 | 45 | 100% |  | Benjamín — Desarrollador de gameplay |
| 49 | 2.14 | JW.2 — Programar detección de golpes correctos | 0.5d | 2026-09-10 | 2026-09-11 | 48, 42 | 100% |  | Benjamín — Desarrollador de gameplay |
| 50 | 2.15 | JW.3 — Programar detección de golpes anticipados | 0d | 2026-09-11 | 2026-09-11 | 49 |  |  | Benjamín — Desarrollador de gameplay |
| 51 | 2.16 | JW.4 — Programar detección de golpes atrasados | 0d | 2026-09-11 | 2026-09-11 | 49 |  |  | Benjamín — Desarrollador de gameplay |
| 52 | 2.17 | JW.5 — Programar detección de notas no golpeadas | 0d | 2026-09-11 | 2026-09-11 | 49 | 100% |  | Benjamín — Desarrollador de gameplay |
| 53 | 2.18 | JP.1 — Crear sistema básico de puntuación | 0.5d | 2026-09-11 | 2026-09-14 | 49, 50, 51, 52 | 100% |  | Benjamín — Desarrollador de gameplay |
| 54 | 2.19 | JP.2 — Crear sistema de combo o golpes consecutivos | 0d | 2026-09-14 | 2026-09-14 | 53 |  |  | Benjamín — Desarrollador de gameplay |
| 55 | 2.20 | JP.3 — Crear cálculo de precisión porcentual del usuario | 0d | 2026-09-14 | 2026-09-14 | 53 | 100% |  | Benjamín — Desarrollador de gameplay |
| 56 | 2.21 | JP.4 — Crear resumen de resultados al terminar una canción | 1.25d | 2026-09-22 | 2026-09-23 | 53, 154, 54, 55 |  |  | Benjamín — Desarrollador de gameplay |
| 57 | 2.22 | JI.1 — Integrar evento DrumHit de la batería VR con el juego de ritmo | 0.75d | 2026-09-17 | 2026-09-18 | 26, 49 | 100% |  | Benjamín — Desarrollador de gameplay |
| 58 | 2.23 | JI.2 — Sustituir controles provisionales de teclado por interacción VR | 1d | 2026-09-18 | 2026-09-21 | 57 |  |  | Benjamín — Desarrollador de gameplay |
| 59 | 2.24 | JI.3 — Implementar detección de intensidad del golpe dentro del juego | 1d | 2026-09-18 | 2026-09-21 | 21, 57 |  |  | Benjamín — Desarrollador de gameplay |
| 60 | 2.25 | JI.4 — Diseñar mecánicas en las que determinados golpes requieran distinta intensidad | 0.88d | 2026-09-25 | 2026-09-28 | 59, 107 |  | start no later than 2026-09-25 | Benjamín — Desarrollador de gameplay |
| 61 | 2.26 | JF.1 — Crear feedback visual inmediato de acierto o error | 0.5d | 2026-09-11 | 2026-09-14 | 49, 156 |  | start no later than 2026-09-14 | Benjamín — Desarrollador de gameplay |
| 62 | 2.27 | JF.2 — Crear feedback auditivo para aciertos, errores e interacción | 0d | 2026-09-11 | 2026-09-11 | 135, 49 |  |  | Benjamín — Desarrollador de gameplay |
| 63 | 2.28 | JC.1 — Implementar cuenta regresiva antes de iniciar una canción | 0.25d | 2026-09-10 | 2026-09-10 | 45 |  |  | Benjamín — Desarrollador de gameplay |
| 64 | 2.29 | JC.2 — Crear sistema de pausa y reanudación | 0.75d | 2026-09-21 | 2026-09-22 | 45, 152 |  |  | Benjamín — Desarrollador de gameplay |
| 65 | 2.30 | JC.3 — Crear sistema para reiniciar una actividad | 0.12d | 2026-09-22 | 2026-09-22 | 64 |  |  | Benjamín — Desarrollador de gameplay |
| 66 | 2.31 | JC.4 — Crear sistema para abandonar una actividad y regresar al menú | 0.12d | 2026-09-22 | 2026-09-22 | 64 |  |  | Benjamín — Desarrollador de gameplay |
| 67 | 2.32 | JL.1 — Crear diferentes niveles de dificultad | 0.88d | 2026-09-28 | 2026-09-29 | 108, 53 |  | start no later than 2026-09-28 | Benjamín — Desarrollador de gameplay |
| 68 | 2.33 | JL.2 — Programar selección de dificultad antes de iniciar | 0d | 2026-09-29 | 2026-09-29 | 67, 149 |  |  | Benjamín — Desarrollador de gameplay |
| 69 | 2.34 | JM.1 — Crear modo libre sin puntuación ni notas obligatorias | 0.75d | 2026-09-17 | 2026-09-18 | 26 |  |  | Benjamín — Desarrollador de gameplay |
| 70 | 2.35 | JM.2 — Permitir seleccionar música de fondo en modo libre | 1d | 2026-09-18 | 2026-09-21 | 69, 113 |  |  | Benjamín — Desarrollador de gameplay |
| 71 | 2.36 | JM.3 — Permitir tocar sin música en modo libre | 0d | 2026-09-18 | 2026-09-18 | 69 |  |  | Benjamín — Desarrollador de gameplay |
| 72 | 2.37 | JY — Crear sistema de calibración de latencia entre golpe y música | 0d | 2026-09-21 | 2026-09-21 | 57, 134 |  |  | Benjamín — Desarrollador de gameplay |
| 73 | 2.38 | JW.6 — Ajustar ventanas de precisión después de pruebas de usuarios | 1d | 2026-09-11 | 2026-09-14 | 229 |  |  | Benjamín — Desarrollador de gameplay |
| 74 | 2.39 | JI.5 — Integrar juego de ritmo completo con flujo general de la experiencia | 0.5d | 2026-09-29 | 2026-09-30 | 68, 91, 162, 41, 47, 58, 60, 61, 62, 63, 65, 66 |  |  | Benjamín — Desarrollador de gameplay |

Notes:
- 42: [FUERA DE ALCANCE] Sistema de teclado. Sin objeto: la interacción VR ya existe
- 50: [FUERA DE ALCANCE] Detectar golpes anticipados por separado. Se registran como fallo
- 51: [FUERA DE ALCANCE] Detectar golpes atrasados por separado. Misma razón
- 54: [FUERA DE ALCANCE] Combo. Recortada en R14
- 56: [FUERA DE ALCANCE] Resumen de resultados. Lo cubre II.6
- 58: [FUERA DE ALCANCE] Sustituir teclado por VR. El teclado nunca se construyó
- 59: [FUERA DE ALCANCE] Intensidad dentro del juego. DrumHit ya la lleva
- 60: [FUERA DE ALCANCE] Mecánicas por intensidad. Recortada en R14
- 61: [FUERA DE ALCANCE] Feedback visual. Lo cubre JudgePopup
- 62: [FUERA DE ALCANCE] Feedback auditivo. La batería ya suena al golpear
- 63: [FUERA DE ALCANCE] Cuenta regresiva. Recortada en R14; los compases de entrada la cubren
- 64: [FUERA DE ALCANCE] Pausa y reanudación. Recortada en R14
- 65: [FUERA DE ALCANCE] Reiniciar actividad. Recortada en R14
- 66: [FUERA DE ALCANCE] Abandonar actividad. Recortada en R14
- 67: [FUERA DE ALCANCE] Niveles de dificultad. Recortada en R14
- 68: [FUERA DE ALCANCE] Selección de dificultad. Depende de JL.1
- 69: [FUERA DE ALCANCE] Modo libre. La batería ya es tocable fuera del juego
- 70: [FUERA DE ALCANCE] Música de fondo en modo libre. Depende de JM.1
- 71: [FUERA DE ALCANCE] Tocar sin música. Depende de JM.1
- 72: [FUERA DE ALCANCE] Calibración de latencia. Ya resuelta: p90 de +4.07 ms
- 73: [FUERA DE ALCANCE] Ajustar ventanas tras pruebas. Requiere iteración que no cabe
- 74: [FUERA DE ALCANCE] Integrar con el flujo general. Depende de los menús

| ID | WBS | Task | Duration | Start | Finish | Predecessors | Complete | Constraint | Resources |
| --- | --- | --- | --- | --- | --- | --- | --- | --- | --- |
| 75 | 3 | **E. Experiencia emocional** | 10d | 2026-09-07 | 2026-09-18 |  | 96% |  |  |
| 76 | 3.1 | EO.1 — Definir objetivo general de la experiencia emocional | 0.5d | 2026-09-07 | 2026-09-07 |  | 100% |  | María — Analista e investigador |
| 77 | 3.2 | EO.2 — Definir alcance y límites del proyecto respecto al concepto de terapia | 0.5d | 2026-09-07 | 2026-09-07 | 76 | 100% | start no later than 2026-09-07 | María — Analista e investigador |
| 78 | 3.3 | EB.1 — Buscar bibliografía científica sobre música y regulación emocional | 2d | 2026-09-07 | 2026-09-08 |  | 100% |  | María — Analista e investigador |
| 79 | 3.4 | EB.2 — Buscar bibliografía científica sobre percusión y expresión emocional | 2d | 2026-09-07 | 2026-09-08 |  | 100% |  | María — Analista e investigador |
| 80 | 3.5 | EB.3 — Buscar investigaciones sobre juegos de ritmo relacionados con bienestar y expresión emocional | 1d | 2026-09-07 | 2026-09-07 |  | 100% |  | María — Analista e investigador |
| 81 | 3.6 | EB.4 — Seleccionar estudios científicos que realmente sustentarán el proyecto | 1d | 2026-09-09 | 2026-09-09 | 78, 79, 80 | 100% |  | María — Analista e investigador |
| 82 | 3.7 | EB.5 — Crear matriz bibliográfica de artículos, objetivo, metodología y resultados | 2d | 2026-09-10 | 2026-09-11 | 81 | 100% |  | María — Analista e investigador |
| 83 | 3.8 | EE.1 — Definir qué emociones serán abordadas dentro de la simulación | 1d | 2026-09-10 | 2026-09-10 | 81 | 100% |  | María — Analista e investigador |
| 84 | 3.9 | EE.2 — Definir qué actividades se relacionarán con cada emoción | 1d | 2026-09-11 | 2026-09-11 | 83 | 100% |  | María — Analista e investigador |
| 85 | 3.10 | EE.3 — Determinar duración aproximada de una sesión | 0.38d | 2026-09-14 | 2026-09-14 | 84 | 100% |  | María — Analista e investigador |
| 86 | 3.11 | ER — Investigar postura, comodidad y ergonomía durante actividades de percusión VR | 1d | 2026-09-10 | 2026-09-10 | 81 | 100% |  | María — Analista e investigador |
| 87 | 3.12 | EG.1 — Redactar el guion de introducción general de la terapia | 1d | 2026-09-11 | 2026-09-11 | 77, 83 | 100% |  | María — Analista e investigador |
| 88 | 3.13 | EG.2 — Redactar las instrucciones específicas de la actividad terapéutica | 1d | 2026-09-14 | 2026-09-14 | 84, 87 | 100% |  | María — Analista e investigador |
| 89 | 3.14 | EF — Diseñar flujo completo de experiencia desde ingreso hasta finalización | 2d | 2026-09-15 | 2026-09-16 | 84, 87, 88, 85 | 100% |  | María — Analista e investigador |
| 90 | 3.15 | EG.3 — Redactar el guion del tutorial introductorio | 1d | 2026-09-17 | 2026-09-17 | 88, 89 | 100% |  | María — Analista e investigador |
| 91 | 3.16 | EI — Definir cómo se utilizarán el ritmo y la intensidad de los golpes para expresar las emociones seleccionadas | 1d | 2026-09-14 | 2026-09-14 | 83, 84 | 100% |  | María — Analista e investigador |
| 92 | 3.17 | EG.4 — Redactar el guion de cierre de la experiencia terapéutica | 0.38d | 2026-09-17 | 2026-09-17 | 89 | 100% |  | María — Analista e investigador |
| 93 | 3.18 | ET.1 — Redactar la fundamentación teórica de la propuesta terapéutica | 3d | 2026-09-15 | 2026-09-17 | 82, 91 | 100% |  | María — Analista e investigador |
| 94 | 3.19 | ET.2 — Revisar y actualizar la fundamentación según el funcionamiento final del prototipo | 1d | 2026-09-18 | 2026-09-18 | 93, 229 |  |  | María — Analista e investigador |
| 95 | 4 | **M. Música** | 19.75d | 2026-09-07 | 2026-10-09 |  | 7% |  |  |
| 96 | 4.1 | MR.1 — Investigar características musicales adecuadas para la experiencia planteada | 2d | 2026-09-14 | 2026-09-15 | 82 |  |  | Javier — Compositor y diseñador musical |
| 97 | 4.2 | MR.2 — Analizar BPM utilizados en las referencias encontradas | 1d | 2026-09-16 | 2026-09-16 | 96 |  |  | Javier — Compositor y diseñador musical |
| 98 | 4.3 | MR.3 — Analizar compases y patrones rítmicos apropiados para principiantes | 1d | 2026-09-16 | 2026-09-16 | 96 |  |  | Javier — Compositor y diseñador musical |
| 99 | 4.4 | MR.4 — Definir estilos musicales que utilizará el proyecto | 1d | 2026-09-17 | 2026-09-17 | 96, 97, 98 |  |  | Javier — Compositor y diseñador musical |
| 100 | 4.5 | MR.5 — Definir duración de las pistas musicales | 0.38d | 2026-09-18 | 2026-09-18 | 86, 99 |  |  | Javier — Compositor y diseñador musical |
| 101 | 4.6 | ML.1 — Determinar si se utilizará música original, libre de derechos o licenciada | 0.5d | 2026-09-07 | 2026-09-07 |  | 100% |  | Javier — Compositor y diseñador musical |
| 102 | 4.7 | ML.2 — Investigar licencias de las pistas o recursos musicales considerados | 1d | 2026-09-07 | 2026-09-08 | 101 | 100% | start no later than 2026-09-07 | Javier — Compositor y diseñador musical |
| 103 | 4.8 | MP.1 — Crear o seleccionar primera pista musical de prueba | 2d | 2026-09-18 | 2026-09-22 | 99, 101, 100 | 100% |  | Javier — Compositor y diseñador musical |
| 104 | 4.9 | MP.2 — Determinar BPM exacto de la primera pista | 0d | 2026-09-22 | 2026-09-22 | 103 | 100% |  | Javier — Compositor y diseñador musical |
| 105 | 4.10 | MP.3 — Identificar estructura musical de la primera pista | 0d | 2026-09-22 | 2026-09-22 | 103 | 100% |  | Javier — Compositor y diseñador musical |
| 106 | 4.11 | MB.1 — Crear patrón básico de batería para la primera pista | 1.75d | 2026-09-22 | 2026-09-24 | 105 | 100% |  | Javier — Compositor y diseñador musical |
| 107 | 4.12 | MB.2 — Definir momentos donde se utilizarán golpes suaves, medios o fuertes | 1.25d | 2026-09-24 | 2026-09-25 | 106 |  |  | Javier — Compositor y diseñador musical |
| 108 | 4.13 | MB.3 — Crear versiones de dificultad Tutorial, Fácil e Intermedio del patrón | 2.25d | 2026-09-24 | 2026-09-28 | 106 |  |  | Javier — Compositor y diseñador musical |
| 109 | 4.14 | MB.4 — Convertir patrón rítmico en información utilizable para el beatmap | 0.88d | 2026-09-28 | 2026-09-29 | 108, 104 | 100% | start no later than 2026-09-28 | Javier — Compositor y diseñador musical |
| 110 | 4.15 | MB.5 — Probar primer beatmap junto con el desarrollador | 0.62d | 2026-09-29 | 2026-09-30 | 45, 109 |  |  | Javier — Compositor y diseñador musical |
| 111 | 4.16 | MB.6 — Corregir patrones que resulten poco cómodos o confusos | 0.5d | 2026-09-30 | 2026-10-01 | 110 |  |  | Javier — Compositor y diseñador musical |
| 112 | 4.17 | MA.1 — Crear o seleccionar pistas adicionales | 2.88d | 2026-10-01 | 2026-10-06 | 111 |  | start no later than 2026-10-01 | Javier — Compositor y diseñador musical |
| 113 | 4.18 | MA.2 — Preparar pistas para modo libre | 1d | 2026-09-07 | 2026-09-07 |  |  |  | Javier — Compositor y diseñador musical |
| 114 | 4.19 | MN.1 — Normalizar formato, frecuencia de muestreo y volumen de todas las pistas | 1d | 2026-10-06 | 2026-10-07 | 112 |  |  | Javier — Compositor y diseñador musical |
| 115 | 4.20 | MN.2 — Documentar BPM, duración, compás y finalidad de cada pista | 0.25d | 2026-10-07 | 2026-10-07 | 114 |  |  | Javier — Compositor y diseñador musical |

Notes:
- 96: [FUERA DE ALCANCE] Investigar características musicales
- 97: [FUERA DE ALCANCE] Analizar BPM de referencias
- 98: [FUERA DE ALCANCE] Analizar compases para principiantes
- 99: [FUERA DE ALCANCE] Definir estilos musicales. Se recorta a una pista
- 100: [FUERA DE ALCANCE] Definir duración de las pistas
- 107: [FUERA DE ALCANCE] Momentos de intensidad en el patrón
- 108: [FUERA DE ALCANCE] Tres versiones de dificultad. Las dificultades se recortaron en R14
- 110: [FUERA DE ALCANCE] Probar el beatmap con el desarrollador. Se cubre en QT.7
- 111: [FUERA DE ALCANCE] Corregir patrones. Requiere iteración que no cabe
- 112: [FUERA DE ALCANCE] Pistas adicionales. Con una basta para demostrar
- 113: [FUERA DE ALCANCE] Pistas para modo libre. El modo libre se recortó en R14
- 114: [FUERA DE ALCANCE] Normalizar todas las pistas. Solo hay una
- 115: [FUERA DE ALCANCE] Documentar BPM y compás de cada pista. Se cubre en MP.2 y MP.3

| ID | WBS | Task | Duration | Start | Finish | Predecessors | Complete | Constraint | Resources |
| --- | --- | --- | --- | --- | --- | --- | --- | --- | --- |
| 116 | 5 | **S. Sonido** | 11d | 2026-09-07 | 2026-09-25 |  | 3% |  |  |
| 117 | 5.1 | SP.1 — Crear lista de todos los sonidos necesarios para el proyecto | 0.38d | 2026-09-07 | 2026-09-07 |  | 100% |  | Christian — Diseñador de audio |
| 118 | 5.2 | SP.2 — Investigar bancos de sonidos compatibles con la licencia del proyecto | 1d | 2026-09-07 | 2026-09-08 | 117 |  |  | Christian — Diseñador de audio |
| 119 | 5.3 | SB.1 — Buscar sonido de kick | 0d | 2026-09-08 | 2026-09-08 | 118 | 100% |  | Christian — Diseñador de audio |
| 120 | 5.4 | SB.2 — Buscar sonido de snare | 0d | 2026-09-08 | 2026-09-08 | 118 | 100% |  | Christian — Diseñador de audio |
| 121 | 5.5 | SB.3 — Buscar sonidos de toms | 0d | 2026-09-08 | 2026-09-08 | 118 | 100% |  | Christian — Diseñador de audio |
| 122 | 5.6 | SB.4 — Buscar sonidos de hi-hat abierto y cerrado | 0d | 2026-09-08 | 2026-09-08 | 118 | 100% |  | Christian — Diseñador de audio |
| 123 | 5.7 | SB.5 — Buscar sonidos de crash y ride | 0d | 2026-09-08 | 2026-09-08 | 118 | 100% |  | Christian — Diseñador de audio |
| 124 | 5.8 | SB.6 — Seleccionar tres niveles de intensidad para cada componente principal | 2.75d | 2026-09-08 | 2026-09-11 | 119, 120, 121, 122, 123 | 100% |  | Christian — Diseñador de audio |
| 125 | 5.9 | SE.1 — Editar inicio y final de cada muestra para evitar retrasos | 1.25d | 2026-09-11 | 2026-09-14 | 124 | 100% |  | Christian — Diseñador de audio |
| 126 | 5.10 | SE.2 — Eliminar ruidos innecesarios de las muestras | 1.25d | 2026-09-11 | 2026-09-14 | 124 |  |  | Christian — Diseñador de audio |
| 127 | 5.11 | SE.3 — Normalizar volumen de las muestras de batería | 1d | 2026-09-14 | 2026-09-15 | 125 | 100% |  | Christian — Diseñador de audio |
| 128 | 5.12 | SE.4 — Exportar sonidos en formato apropiado para Unity | 0d | 2026-09-15 | 2026-09-15 | 127, 126 | 100% |  | Christian — Diseñador de audio |
| 129 | 5.13 | SM.1 — Crear Audio Mixer dentro de Unity | 0d | 2026-09-15 | 2026-09-15 | 128 |  |  | Christian — Diseñador de audio |
| 130 | 5.14 | SM.2 — Separar canales de batería, música, ambiente e interfaz | 0.5d | 2026-09-15 | 2026-09-16 | 129 |  |  | Christian — Diseñador de audio |
| 131 | 5.15 | SI.1 — Integrar sonidos de batería con sistema DrumHit | 0.75d | 2026-09-17 | 2026-09-18 | 26, 128 | 100% |  | Christian — Diseñador de audio |
| 132 | 5.16 | SI.2 — Asignar sonidos diferentes según intensidad del golpe | 1d | 2026-09-18 | 2026-09-21 | 22, 131 | 100% |  | Christian — Diseñador de audio |
| 133 | 5.17 | SI.3 — Configurar volumen espacial de la batería dentro del entorno VR | 1d | 2026-09-18 | 2026-09-21 | 131 | 100% |  | Christian — Diseñador de audio |
| 134 | 5.18 | SI.4 — Medir retraso perceptible entre impacto y reproducción del sonido | 1d | 2026-09-18 | 2026-09-21 | 131 | 100% |  | Christian — Diseñador de audio |
| 135 | 5.19 | SU — Buscar y preparar sonidos para botones, aciertos y errores | 0d | 2026-09-08 | 2026-09-08 | 118 |  |  | Christian — Diseñador de audio |
| 136 | 5.20 | SA.1 — Buscar o producir sonidos ambientales para el escenario | 1.75d | 2026-09-14 | 2026-09-16 | 179 |  |  | Christian — Diseñador de audio |
| 137 | 5.21 | SA.2 — Integrar ambiente sonoro con escenario final | 0.5d | 2026-09-23 | 2026-09-24 | 136, 190 |  |  | Christian — Diseñador de audio |
| 138 | 5.22 | SC.1 — Crear controles independientes de volumen para música, batería y ambiente | 0d | 2026-09-22 | 2026-09-22 | 130, 151 |  |  | Christian — Diseñador de audio |
| 139 | 5.23 | SC.2 — Realizar mezcla general de audio | 0.88d | 2026-09-24 | 2026-09-25 | 137, 138, 133 |  | start no later than 2026-09-24 | Christian — Diseñador de audio |

Notes:
- 118: [FUERA DE ALCANCE] Investigar bancos de sonidos. El pack actual ya cubre el kit
- 123: [HECHA 2026-10-19] Crash y Platillo (ride) con cinco capas de velocidad cada uno, del kit AVL Drumkits Red Zeppelin bajo CC BY-SA 3.0. El crash entro como septima pieza el 19-oct: Assets/Audio/Piezas/Crash.asset y Platillo.asset
- 126: [FUERA DE ALCANCE] Eliminar ruidos. Las muestras del pack vienen limpias
- 129: [FUERA DE ALCANCE] AUDIO MIXER: añade un nodo al camino del audio y obligaría a remedir la latencia, que es la medida 4 y la única ya ganada con margen
- 130: [FUERA DE ALCANCE] Depende de SM.1
- 135: [FUERA DE ALCANCE] Sonidos de interfaz
- 136: [FUERA DE ALCANCE] Sonidos ambientales del escenario
- 137: [FUERA DE ALCANCE] Depende de SA.1
- 138: [FUERA DE ALCANCE] Controles de volumen por canal. Ninguna medida los pide
- 139: [FUERA DE ALCANCE] Mezcla general. Misma razón

| ID | WBS | Task | Duration | Start | Finish | Predecessors | Complete | Constraint | Resources |
| --- | --- | --- | --- | --- | --- | --- | --- | --- | --- |
| 140 | 6 | **I. Interfaz / UX/UI** | 8.88d | 2026-09-10 | 2026-09-30 |  | 34% |  |  |
| 141 | 6.1 | IM.1 — Definir mapa completo de pantallas de la aplicación | 1d | 2026-09-17 | 2026-09-18 | 91, 92 | 100% |  | Sarai — Diseñador de interacción UX-XR |
| 142 | 6.2 | IM.2 — Definir navegación entre menú, experiencia guiada, juego y modo libre | 0.75d | 2026-09-18 | 2026-09-18 | 141 | 100% |  | Sarai — Diseñador de interacción UX-XR |
| 143 | 6.3 | IW.1 — Crear wireframe del menú principal | 0.75d | 2026-09-18 | 2026-09-21 | 142 | 100% |  | Sarai — Diseñador de interacción UX-XR |
| 144 | 6.4 | IW.2 — Crear wireframe de selección de modo | 0.75d | 2026-09-18 | 2026-09-21 | 142 | 100% |  | Sarai — Diseñador de interacción UX-XR |
| 145 | 6.5 | IW.3 — Crear wireframe de selección emocional | 0.75d | 2026-09-18 | 2026-09-21 | 88, 142 | 100% |  | Sarai — Diseñador de interacción UX-XR |
| 146 | 6.6 | IW.4 — Crear wireframe del tutorial | 0.5d | 2026-09-18 | 2026-09-21 | 89, 142 |  |  | Sarai — Diseñador de interacción UX-XR |
| 147 | 6.7 | IW.5 — Crear wireframe de pantalla previa al juego | 0.75d | 2026-09-18 | 2026-09-21 | 142 | 100% |  | Sarai — Diseñador de interacción UX-XR |
| 148 | 6.8 | IW.6 — Crear wireframe de resultados | 0.5d | 2026-09-18 | 2026-09-21 | 142 |  |  | Sarai — Diseñador de interacción UX-XR |
| 149 | 6.9 | IS.1 — Crear interfaz para selección de canción y dificultad | 0.75d | 2026-09-21 | 2026-09-22 | 143 |  |  | Sarai — Diseñador de interacción UX-XR |
| 150 | 6.10 | IS.2 — Diseñar menú de configuración | 0.75d | 2026-09-21 | 2026-09-22 | 143 |  |  | Sarai — Diseñador de interacción UX-XR |
| 151 | 6.11 | IS.3 — Diseñar controles para volumen de música, batería y ambiente | 0d | 2026-09-22 | 2026-09-22 | 150 |  |  | Sarai — Diseñador de interacción UX-XR |
| 152 | 6.12 | IS.4 — Diseñar menú de pausa | 0d | 2026-09-21 | 2026-09-21 | 143 |  |  | Sarai — Diseñador de interacción UX-XR |
| 153 | 6.13 | IS.5 — Diseñar pantalla de confirmación para salir o reiniciar | 0.75d | 2026-09-21 | 2026-09-22 | 152 |  |  | Sarai — Diseñador de interacción UX-XR |
| 154 | 6.14 | IS.6 — Diseñar presentación de resultados finales | 1d | 2026-09-21 | 2026-09-22 | 148 |  |  | Sarai — Diseñador de interacción UX-XR |
| 155 | 6.15 | IE — Definir estilo visual general de la interfaz | 1d | 2026-09-11 | 2026-09-14 | 175 |  |  | Sarai — Diseñador de interacción UX-XR |
| 156 | 6.16 | IG.1 — Diseñar indicadores visuales de Perfect, Good y Miss | 1d | 2026-09-10 | 2026-09-10 | 155 | 100% |  | Sarai — Diseñador de interacción UX-XR |
| 157 | 6.17 | IG.2 — Diseñar representación definitiva de las notas del juego | 2d | 2026-09-11 | 2026-09-15 | 155, 46 | 100% |  | Sarai — Diseñador de interacción UX-XR |
| 158 | 6.18 | IG.3 — Diseñar indicadores para señalar el tambor que debe golpearse | 0.75d | 2026-09-14 | 2026-09-14 | 157 | 100% |  | Sarai — Diseñador de interacción UX-XR |
| 159 | 6.19 | IT.1 — Diseñar tutorial visual sobre cómo sujetar las baquetas | 1d | 2026-09-11 | 2026-09-14 | 13 |  |  | Sarai — Diseñador de interacción UX-XR |
| 160 | 6.20 | IT.2 — Diseñar tutorial para explicar cómo seguir el ritmo | 0.5d | 2026-09-11 | 2026-09-14 | 49 | 100% | start no later than 2026-09-14 | Sarai — Diseñador de interacción UX-XR |
| 161 | 6.21 | IT.3 — Diseñar tutorial para explicar la intensidad de los golpes | 1d | 2026-09-17 | 2026-09-18 | 22 | 100% |  | Sarai — Diseñador de interacción UX-XR |
| 162 | 6.22 | IT.4 — Implementar flujo del tutorial completo | 2d | 2026-09-18 | 2026-09-22 | 159, 161, 90 | 100% | start no later than 2026-09-18 | Sarai — Diseñador de interacción UX-XR |
| 163 | 6.23 | II.1 — Importar recursos gráficos de Canva/Figma a Unity | 0.75d | 2026-09-21 | 2026-09-22 | 155, 144, 145, 146, 147 |  |  | Sarai — Diseñador de interacción UX-XR |
| 164 | 6.24 | II.2 — Implementar menú principal dentro de Unity | 1d | 2026-09-22 | 2026-09-23 | 163 | 100% |  | Sarai — Diseñador de interacción UX-XR |
| 165 | 6.25 | II.3 — Implementar interacción con botones utilizando controlador VR | 0d | 2026-09-23 | 2026-09-23 | 9, 164 | 100% |  | Sarai — Diseñador de interacción UX-XR |
| 166 | 6.26 | II.4 — Implementar configuración de volumen | 0.75d | 2026-09-23 | 2026-09-24 | 138, 165 |  |  | Sarai — Diseñador de interacción UX-XR |
| 167 | 6.27 | II.5 — Implementar menú de pausa | 0.75d | 2026-09-23 | 2026-09-24 | 152, 165, 153 |  |  | Sarai — Diseñador de interacción UX-XR |
| 168 | 6.28 | II.6 — Implementar pantalla de resultados | 1.25d | 2026-09-22 | 2026-09-23 | 56, 154 | 100% |  | Sarai — Diseñador de interacción UX-XR |
| 169 | 6.29 | IR.1 — Revisar legibilidad de textos dentro del visor VR | 0.75d | 2026-09-23 | 2026-09-24 | 165 | 100% |  | Sarai — Diseñador de interacción UX-XR |
| 170 | 6.30 | IR.2 — Revisar tamaño, distancia y posición de paneles | 0.25d | 2026-09-24 | 2026-09-24 | 169 | 100% |  | Sarai — Diseñador de interacción UX-XR |
| 171 | 6.31 | IR.3 — Corregir problemas de navegación encontrados en pruebas | 1d | 2026-09-11 | 2026-09-14 | 229 |  |  | Sarai — Diseñador de interacción UX-XR |

Notes:
- 146: [FUERA DE ALCANCE] Wireframe del tutorial. Se implementa directo
- 148: [FUERA DE ALCANCE] Wireframe de resultados. Ya existe como prototipo
- 149: [FUERA DE ALCANCE] Selección de canción y dificultad. Hay una canción y no hay dificultades
- 150: [FUERA DE ALCANCE] Diseñar menú de configuración
- 151: [FUERA DE ALCANCE] Diseñar controles de volumen. Depende de SC
- 152: [FUERA DE ALCANCE] Diseñar menú de pausa. Depende de II.5
- 153: [FUERA DE ALCANCE] Pantalla de confirmación de salida
- 154: [FUERA DE ALCANCE] Diseñar resultados. La pantalla ya existe como prototipo
- 155: [FUERA DE ALCANCE] Estilo visual general. Las pantallas ya existen como diseño
- 160: [HECHA 2026-10-20] PasoSeguirPulso con EcoRitmico: 8 notas, 3 aciertos necesarios, ventanas de 25 y 60 ms. Rediseñado como acompañamiento el 20-oct porque la version anterior callaba el metronomo al empezar el turno del usuario y pedia reproducir de memoria: fallaba 0 de 9 corridas. Pruebas en TutorialPasosTests y EcoRitmicoTests
- 161: [HECHA 2026-10-20] PasoIntensidades: exige los tres niveles suave, medio y fuerte, con el umbral de velocidad en cada pad y no global, porque un bombo se golpea mas fuerte que un hi-hat. Assets/Scripts/Tutorial/PasoIntensidades.cs
- 162: [HECHA 2026-10-20] TutorialRunner conduce los cuatro pasos con baqueta fantasma y rotulo, y FlujoApp lo arranca desde el menu y lleva a resultados. RegistroTutorial vuelca a JSON los intentos, el tiempo por paso, el tiempo hasta el primer golpe y el desfase de cada golpe: es la evidencia de la medida de exito 6
- 163: [FUERA DE ALCANCE] Importar recursos de Canva/Figma. Se implementa directo en Unity
- 164: [HECHA 2026-10-20] ConstruirMenu levanta TOCAR, TUTORIAL y SALIR como pads con disco y rotulo, cableando los diez campos de FlujoApp. EscenaCompletaTests comprueba el montaje entero, incluido que el marcador se apague fuera de Tocando
- 165: [HECHA 2026-10-20] Los botones se golpean con las baquetas por el MISMO camino de deteccion que el kit: StickTracker los lleva en su lista y PadDeMenu filtra que el golpe venga de una mano. No hay un segundo mecanismo de entrada que mantener
- 166: [FUERA DE ALCANCE] Configuración de volumen. Depende de los canales recortados en SC
- 167: [FUERA DE ALCANCE] Menú de pausa. La pausa se recortó en R14
- 168: [HECHA 2026-10-20] PanelResultados y TextoResultados: el resultado dicho en palabras y no solo en cifras. Pruebas en TextoResultadosTests
- 169: [HECHA 2026-10-20] Tamaños MEDIDOS sobre la escena, no estimados. JudgePopup en 0.00556, que con el factor 36 de TMP da 0.200 de cuerpo, el mismo que el Indicador validado en el visor; el rotulo del tutorial en 0.85, escalado desde el 0.50 validado al pasar de 0.50 m de los ojos a 0.87; marcador e Indicador con autoajuste. LosTamanosDeTextoSonLosValidados los fija, porque tres correcciones seguidas no habian llegado nunca a la escena
- 170: [HECHA 2026-10-20] Tres posiciones corregidas con medida. El panel del marcador se ancla al kit en coordenadas de MUNDO tras encontrarse a dieciseis metros por heredar una posicion local; el rotulo del tutorial pasa del bombo -31 cm fuera del eje, 16 mas alto y 45 cm mas cerca- al punto exacto del marcador; y el promedio que situa el panel deja de contar los botones del menu. Con sus pruebas de escena
- 171: [FUERA DE ALCANCE] Corregir navegación tras pruebas. Requiere iteración que no cabe

| ID | WBS | Task | Duration | Start | Finish | Predecessors | Complete | Constraint | Resources |
| --- | --- | --- | --- | --- | --- | --- | --- | --- | --- |
| 172 | 7 | **A. Entorno 3D y assets** | 16.88d | 2026-09-07 | 2026-10-06 |  | 4% |  |  |
| 173 | 7.1 | AE.1 — Investigar qué tipo de entorno puede favorecer la experiencia propuesta | 2d | 2026-09-14 | 2026-09-15 | 82 |  |  | Kimberly — Artista y modelador 3D |
| 174 | 7.2 | AE.2 — Comparar posibles ambientes: naturaleza, estudio musical, espacio minimalista y otros | 1d | 2026-09-07 | 2026-09-07 | 173 |  |  | Kimberly — Artista y modelador 3D |
| 175 | 7.3 | AE.3 — Definir dirección artística general del escenario | 1d | 2026-09-08 | 2026-09-08 | 174 |  |  | Kimberly — Artista y modelador 3D |
| 176 | 7.4 | AC.1 — Investigar teoría del color y su relación con la percepción emocional, concentración y confort visual dentro de entornos virtuales | 1d | 2026-09-10 | 2026-09-10 | 81 |  |  | Kimberly — Artista y modelador 3D |
| 177 | 7.5 | AC.2 — Definir paleta de colores y criterios para aplicarla en los modelos 3D y el entorno según la experiencia emocional propuesta | 0.38d | 2026-09-11 | 2026-09-11 | 175, 176, 83 |  |  | Kimberly — Artista y modelador 3D |
| 178 | 7.6 | AC.3 — Crear moodboard visual del escenario incorporando la dirección artística y la paleta de colores seleccionada | 1d | 2026-09-11 | 2026-09-14 | 175, 177 |  |  | Kimberly — Artista y modelador 3D |
| 179 | 7.7 | AA.1 — Crear lista de todos los assets 3D necesarios | 0d | 2026-09-14 | 2026-09-14 | 178 |  |  | Kimberly — Artista y modelador 3D |
| 180 | 7.8 | AA.2 — Definir límites de polígonos y rendimiento adecuados para VR | 0.75d | 2026-09-08 | 2026-09-09 | 6 |  |  | Kimberly — Artista y modelador 3D |
| 181 | 7.9 | AA.3 — Buscar assets de entorno compatibles con el estilo elegido | 2.75d | 2026-09-14 | 2026-09-17 | 179, 180 | 100% |  | Kimberly — Artista y modelador 3D |
| 182 | 7.10 | AA.4 — Revisar licencias de los assets seleccionados | 1.25d | 2026-09-17 | 2026-09-18 | 181 | 100% |  | Kimberly — Artista y modelador 3D |
| 183 | 7.11 | AB.1 — Buscar modelo de batería adecuado | 1.75d | 2026-09-14 | 2026-09-16 | 179 |  |  | Kimberly — Artista y modelador 3D |
| 184 | 7.12 | AB.2 — Revisar licencia del modelo de batería | 0.25d | 2026-09-16 | 2026-09-16 | 183 |  |  | Kimberly — Artista y modelador 3D |
| 185 | 7.13 | AB.3 — Buscar o crear modelos definitivos de baquetas | 0.75d | 2026-09-14 | 2026-09-15 | 179 |  |  | Kimberly — Artista y modelador 3D |
| 186 | 7.14 | AB.4 — Optimizar modelo de batería para VR | 0d | 2026-09-16 | 2026-09-16 | 183, 184 |  |  | Kimberly — Artista y modelador 3D |
| 187 | 7.15 | AB.5 — Optimizar materiales y texturas de la batería considerando la paleta de colores establecida | 0.62d | 2026-09-16 | 2026-09-17 | 186, 177 |  |  | Kimberly — Artista y modelador 3D |
| 188 | 7.16 | AB.6 — Preparar batería definitiva para integración en Unity | 0.75d | 2026-09-17 | 2026-09-17 | 187 |  |  | Kimberly — Artista y modelador 3D |
| 189 | 7.17 | AP.1 — Crear primera composición del escenario en Unity | 1.88d | 2026-09-18 | 2026-09-22 | 181, 182 | 100% | start no later than 2026-09-18 | Kimberly — Artista y modelador 3D |
| 190 | 7.18 | AP.2 — Determinar posición del jugador y batería dentro del escenario | 0.62d | 2026-09-22 | 2026-09-23 | 189, 86 |  |  | Kimberly — Artista y modelador 3D |
| 191 | 7.19 | AP.3 — Aplicar la paleta de colores seleccionada a modelos, materiales y elementos principales del escenario | 0.62d | 2026-09-22 | 2026-09-23 | 177, 189 |  |  | Kimberly — Artista y modelador 3D |
| 192 | 7.20 | AL.1 — Configurar iluminación inicial considerando la paleta de colores establecida | 1.12d | 2026-09-23 | 2026-09-24 | 189, 191 | 100% |  | Kimberly — Artista y modelador 3D |
| 193 | 7.21 | AL.2 — Configurar iluminación definitiva y ambiente visual | 0.88d | 2026-09-24 | 2026-09-25 | 192 | 100% | start no later than 2026-09-24 | Kimberly — Artista y modelador 3D |
| 194 | 7.22 | AD.1 — Añadir elementos ambientales secundarios | 1d | 2026-09-25 | 2026-09-28 | 193 |  |  | Kimberly — Artista y modelador 3D |
| 195 | 7.23 | AD.2 — Reducir objetos que puedan distraer al usuario | 0d | 2026-09-28 | 2026-09-28 | 194 |  |  | Kimberly — Artista y modelador 3D |
| 196 | 7.24 | AS — Crear límites visuales de seguridad del espacio de interacción | 0.5d | 2026-09-23 | 2026-09-24 | 190 | 100% |  | Kimberly — Artista y modelador 3D |
| 197 | 7.25 | AO.1 — Optimizar texturas del escenario para VR | 0.25d | 2026-09-28 | 2026-09-28 | 194 |  |  | Kimberly — Artista y modelador 3D |
| 198 | 7.26 | AO.2 — Configurar LOD en objetos que lo requieran | 1.62d | 2026-09-28 | 2026-09-30 | 197 |  |  | Kimberly — Artista y modelador 3D |
| 199 | 7.27 | AO.3 — Revisar cantidad de luces en tiempo real | 0d | 2026-09-25 | 2026-09-25 | 193 |  |  | Kimberly — Artista y modelador 3D |
| 200 | 7.28 | AO.4 — Preparar iluminación horneada cuando sea conveniente | 0.62d | 2026-09-25 | 2026-09-25 | 199 |  |  | Kimberly — Artista y modelador 3D |
| 201 | 7.29 | AO.5 — Evaluar FPS del escenario en el visor objetivo | 1.12d | 2026-09-30 | 2026-10-01 | 200, 198 | 100% |  | Kimberly — Artista y modelador 3D |
| 202 | 7.30 | AO.6 — Optimizar escenario hasta cumplir rendimiento esperado | 0.75d | 2026-10-01 | 2026-10-02 | 201 |  |  | Kimberly — Artista y modelador 3D |
| 203 | 7.31 | AR.1 — Revisar ambiente visual con el responsable de experiencia emocional para comprobar que colores, iluminación y escenario sean coherentes con la experiencia propuesta | 0d | 2026-09-25 | 2026-09-25 | 193, 89, 91 |  |  | Kimberly — Artista y modelador 3D |
| 204 | 7.32 | AR.2 — Realizar ajustes finales de ambientación | 0.25d | 2026-09-28 | 2026-09-28 | 203, 195 |  |  | Kimberly — Artista y modelador 3D |

Notes:
- 173: [FUERA DE ALCANCE] Investigar tipo de entorno. Se decide al elegir los assets
- 174: [FUERA DE ALCANCE] Comparar ambientes. Misma razón
- 175: [FUERA DE ALCANCE] Dirección artística. Misma razón
- 176: [FUERA DE ALCANCE] Teoría del color. YA EXISTE el documento de paleta del equipo
- 177: [FUERA DE ALCANCE] La paleta ya está definida en ese documento
- 178: [FUERA DE ALCANCE] Moodboard. No sirve a ninguna medida
- 179: [FUERA DE ALCANCE] Catálogo de assets. Se buscan directamente los que se van a usar
- 180: [FUERA DE ALCANCE] Límites de polígonos. Ya están escritos en el diseño técnico del proyecto
- 181: [HECHA 2026-10-18] Assets elegidos y copiados: Stage y Stadium Seats de Poly Pizza, skybox de Kenney, arbol y textura de tierra de Fantasy Forest
- 182: [HECHA 2026-10-18] Licencia de cada asset verificada en su pagina de origen. Dos regimenes distintos: CC0/CC BY 3.0 y Standard Unity Asset Store EULA
- 183: [FUERA DE ALCANCE] Modelo de batería. El kit de primitivas ya funciona y está medido
- 184: [FUERA DE ALCANCE] Depende de AB.1
- 185: [FUERA DE ALCANCE] Modelos de baquetas. Las actuales cumplen
- 186: [FUERA DE ALCANCE] Depende de AB.1
- 187: [FUERA DE ALCANCE] Depende de AB.1
- 188: [FUERA DE ALCANCE] Depende de AB.1
- 189: [HECHA 2026-10-18] Escena compuesta por script: Assets/Editor/ConstruirBosque.cs. Claro de bosque con 20 arboles en tres anillos y suelo texturizado
- 190: [FUERA DE ALCANCE] Posición del jugador. Ya resuelta: el kit está medido y calibrado
- 191: [FUERA DE ALCANCE] Aplicar la paleta. Se cubre al componer en AP.1
- 193: [HECHA 2026-10-18] Iluminacion y ambiente definidos: sol bajo calido o luna rasante, ambiente de tres tonos, niebla exponencial y sombras suaves
- 194: [FUERA DE ALCANCE] Elementos ambientales secundarios
- 195: [FUERA DE ALCANCE] Depende de AD.1
- 196: [HECHA 2026-10-18] LimiteSeguro dibuja el perimetro del espacio con radio calculado del pad mas lejano mas 0.5 m de margen. Verificado en el visor durante la corrida de FPS del 18-oct: el circulo se ve y el radio se siente adecuado. La medida 10 habla de lo que reportan los usuarios, asi que se cierra con observacion, no con un numero del sistema
- 197: [FUERA DE ALCANCE] Optimizar texturas. Se cubre eligiendo assets ya optimizados
- 198: [FUERA DE ALCANCE] LOD. Innecesario con una escena de pocos objetos
- 199: [FUERA DE ALCANCE] Revisar luces en tiempo real. Se cubre en AL.2
- 200: [FUERA DE ALCANCE] Iluminación horneada. Se cubre en AL.2
- 201: [HECHA 2026-10-18] Medido en el visor sobre el entorno definitivo: 12949 fotogramas, 12946 en vsync (100.0 %), 3 vsync perdidos (0.02 %) contra un criterio del 5 %. Evidencia en entregables/mediciones/fps_20261018_060703.json
- 202: [FUERA DE ALCANCE] Optimizar hasta cumplir. Se cubre en AO.5 si la medición falla
- 203: [FUERA DE ALCANCE] Revisión cruzada con experiencia emocional
- 204: [FUERA DE ALCANCE] Ajustes finales de ambientación

| ID | WBS | Task | Type | Duration | Start | Finish | Predecessors | Complete | Constraint | Resources |
| --- | --- | --- | --- | --- | --- | --- | --- | --- | --- | --- |
| 205 | 8 | **Q. QA, documentación y gestión** |  | 27.62d | 2026-09-07 | 2026-10-23 |  | 32% |  |  |
| 206 | 8.1 | QP.1 — Definir alcance general del proyecto |  | 1d | 2026-09-07 | 2026-09-07 |  | 100% |  | Diana — Gerente de proyecto |
| 207 | 8.2 | QP.2 — Definir objetivos generales y específicos |  | 1d | 2026-09-08 | 2026-09-08 | 206 | 100% |  | Diana — Gerente de proyecto |
| 208 | 8.3 | QP.3 — Identificar entregables principales del proyecto |  | 0.38d | 2026-09-09 | 2026-09-09 | 206, 207 | 100% |  | Diana — Gerente de proyecto |
| 209 | 8.4 | QP.4 — Elaborar EDT/WBS completa de tareas |  | 2d | 2026-09-09 | 2026-09-11 | 208 | 100% |  | Diana — Gerente de proyecto |
| 210 | 8.5 | QP.5 — Asignar responsables principales para cada tarea |  | 0.75d | 2026-09-11 | 2026-09-11 | 209 | 100% |  | Diana — Gerente de proyecto |
| 211 | 8.6 | QP.6 — Establecer dependencias entre tareas |  | 0.75d | 2026-09-11 | 2026-09-11 | 209 | 100% |  | Diana — Gerente de proyecto |
| 212 | 8.7 | QP.7 — Crear cronograma inicial del proyecto |  | 0.75d | 2026-09-11 | 2026-09-14 | 209, 211, 210 | 100% |  | Diana — Gerente de proyecto |
| 213 | 8.8 | QP.8 — Crear diagrama de Gantt |  | 0.75d | 2026-09-14 | 2026-09-15 | 212 | 100% |  | Diana — Gerente de proyecto |
| 214 | 8.9 | QP.9 — Identificar ruta crítica del proyecto |  | 1d | 2026-09-15 | 2026-09-16 | 213 | 100% |  | Diana — Gerente de proyecto |
| 215 | 8.10 | QG.1 — Crear lista de riesgos técnicos, académicos y de tiempo |  | 0.75d | 2026-09-16 | 2026-09-16 | 212, 214 | 100% |  | Diana — Gerente de proyecto |
| 216 | 8.11 | QG.2 — Definir acciones de mitigación para cada riesgo |  | 0.5d | 2026-09-16 | 2026-09-17 | 215 |  |  | Diana — Gerente de proyecto |
| 217 | 8.12 | QR.1 — Definir requisitos funcionales de la simulación |  | 2d | 2026-09-08 | 2026-09-09 | 206 | 100% |  | Diana — Analista e investigador |
| 218 | 8.13 | QR.2 — Definir requisitos no funcionales |  | 1d | 2026-09-10 | 2026-09-10 | 217 | 100% |  | Diana — Analista e investigador |
| 219 | 8.14 | QR.3 — Crear criterios de aceptación para cada requisito |  | 2d | 2026-09-11 | 2026-09-14 | 217, 218 | 100% |  | Diana — Analista e investigador |
| 220 | 8.15 | QR.4 — Crear matriz de trazabilidad entre requisitos y funcionalidades |  | 1d | 2026-09-15 | 2026-09-15 | 219 | 100% |  | Diana — Analista e investigador |
| 221 | 8.16 | QE.1 — Establecer formato para documentar errores |  | 0.38d | 2026-09-07 | 2026-09-07 |  | 100% |  | Diana — Analista de pruebas (QA) |
| 222 | 8.17 | QT.1 — Crear plan de pruebas de batería VR |  | 1d | 2026-09-16 | 2026-09-16 | 16, 220 |  |  | Diana — Analista de pruebas (QA) |
| 223 | 8.18 | QT.2 — Crear plan de pruebas del juego de ritmo |  | 1d | 2026-09-16 | 2026-09-16 | 36, 220 |  |  | Diana — Analista de pruebas (QA) |
| 224 | 8.19 | QT.3 — Crear plan de pruebas de interfaz |  | 0d | 2026-09-18 | 2026-09-18 | 141, 220 |  |  | Diana — Analista de pruebas (QA) |
| 225 | 8.20 | QT.4 — Crear plan de pruebas de audio |  | 0.38d | 2026-09-16 | 2026-09-16 | 117, 220 |  |  | Diana — Analista de pruebas (QA) |
| 226 | 8.21 | QT.5 — Crear plan de pruebas de rendimiento VR |  | 1d | 2026-09-16 | 2026-09-16 | 178, 220 |  |  | Diana — Analista de pruebas (QA) |
| 227 | 8.22 | QT.6 — Realizar pruebas unitarias de batería |  | 1d | 2026-09-21 | 2026-09-22 | 33, 222 | 100% |  | Diana — Analista de pruebas (QA) |
| 228 | 8.23 | QT.7 — Realizar pruebas del sistema de ritmo |  | 0.5d | 2026-09-30 | 2026-10-01 | 74, 223 | 100% |  | Diana — Analista de pruebas (QA) |
| 229 | 8.24 | QT.8 — Realizar pruebas con usuarios del prototipo integrado |  | 2d | 2026-09-09 | 2026-09-11 |  |  |  | Diana — Analista de pruebas (QA) |
| 230 | 8.25 | QE.2 — Registrar errores, observaciones y sugerencias de usuarios |  | 1d | 2026-09-11 | 2026-09-14 | 229, 221 |  |  | Diana — Analista de pruebas (QA) |
| 231 | 8.26 | QE.3 — Clasificar errores por gravedad y prioridad |  | 0d | 2026-09-14 | 2026-09-14 | 230 |  |  | Diana — Analista de pruebas (QA) |
| 232 | 8.27 | QE.4 — Asignar errores a las áreas correspondientes |  | 0d | 2026-09-14 | 2026-09-14 | 231 |  |  | Diana — Analista de pruebas (QA) |
| 233 | 8.28 | QE.5 — Verificar corrección de errores críticos |  | 0.62d | 2026-09-14 | 2026-09-15 | 232, 73, 171 |  |  | Diana — Analista de pruebas (QA) |
| 234 | 8.29 | QV.1 — Realizar prueba completa desde inicio hasta final de una sesión |  | 0.62d | 2026-09-15 | 2026-09-15 | 233 |  |  | Diana — Analista de pruebas (QA) |
| 235 | 8.30 | QV.2 — Evaluar estabilidad y presencia de cierres inesperados |  | 0.38d | 2026-09-16 | 2026-09-16 | 234 |  |  | Diana — Analista de pruebas (QA) |
| 236 | 8.31 | QV.3 — Medir FPS del proyecto en el visor objetivo |  | 0.62d | 2026-09-25 | 2026-09-25 | 199, 234 | 100% |  | Diana — Analista de pruebas (QA) |
| 237 | 8.32 | QV.4 — Evaluar latencia entre golpe físico, sonido y detección |  | 1d | 2026-09-22 | 2026-09-23 | 34, 134, 72 | 100% |  | Diana — Analista de pruebas (QA) |
| 238 | 8.33 | QV.5 — Evaluar comodidad de la experiencia VR |  | 1d | 2026-09-11 | 2026-09-14 | 229 |  |  | Diana — Analista de pruebas (QA) |
| 239 | 8.34 | QC.1 — Registrar versiones importantes del proyecto | milestone | 0d | 2026-09-09 | 2026-09-09 | 3 |  |  | Diana — Gerente de proyecto |
| 240 | 8.35 | QC.2 — Documentar avances semanales |  | 0.38d | 2026-09-07 | 2026-09-07 |  | 100% |  | Diana — Gerente de proyecto |
| 241 | 8.36 | QC.3 — Mantener actualizada la bibliografía del proyecto |  | 0.38d | 2026-09-09 | 2026-09-09 | 78 | 100% |  | Diana — Gerente de proyecto |
| 242 | 8.37 | QC.4 — Mantener registro de assets y sus licencias |  | 0d | 2026-09-09 | 2026-09-09 | 180 | 100% |  | Diana — Gerente de proyecto |
| 243 | 8.38 | QC.5 — Mantener registro de música y licencias utilizadas |  | 0d | 2026-09-09 | 2026-09-09 | 102 | 100% |  | Diana — Gerente de proyecto |
| 244 | 8.39 | QD.1 — Crear documentación de arquitectura del software |  | 1.5d | 2026-09-30 | 2026-10-02 | 26, 74 |  |  | Diana — Redactor técnico |
| 245 | 8.40 | QD.2 — Crear diagrama del flujo general de la aplicación |  | 0.5d | 2026-09-18 | 2026-09-21 | 91, 142 |  |  | Diana — Redactor técnico |
| 246 | 8.41 | QD.3 — Documentar funcionamiento del sistema de detección de golpes |  | 0.75d | 2026-09-17 | 2026-09-18 | 26 |  |  | Diana — Redactor técnico |
| 247 | 8.42 | QD.4 — Documentar funcionamiento del juego de ritmo |  | 0.5d | 2026-09-30 | 2026-10-01 | 74 |  |  | Diana — Redactor técnico |
| 248 | 8.43 | QD.5 — Documentar sistema de intensidad de los golpes |  | 0d | 2026-09-21 | 2026-09-21 | 21, 132 |  |  | Diana — Redactor técnico |
| 249 | 8.44 | QD.6 — Documentar selección y fundamentación del entorno virtual |  | 0.75d | 2026-10-01 | 2026-10-02 | 201 |  |  | Diana — Redactor técnico |
| 250 | 8.45 | QD.7 — Documentar fundamentación de la música utilizada |  | 0.62d | 2026-10-07 | 2026-10-08 | 115 |  |  | Diana — Redactor técnico |
| 251 | 8.46 | QD.8 — Documentar diseño y funcionamiento de la interfaz |  | 0.5d | 2026-09-24 | 2026-09-25 | 170 |  |  | Diana — Redactor técnico |
| 252 | 8.47 | QM.1 — Elaborar manual básico de usuario |  | 1.38d | 2026-09-16 | 2026-09-17 | 234 |  |  | Diana — Redactor técnico |
| 253 | 8.48 | QM.2 — Elaborar manual técnico de instalación y ejecución |  | 0.38d | 2026-09-16 | 2026-09-16 | 234 |  |  | Diana — Redactor técnico |
| 254 | 8.49 | QF.1 — Preparar capturas de pantalla del proyecto |  | 0.38d | 2026-09-16 | 2026-09-16 | 234 |  |  | Diana — Redactor técnico |
| 255 | 8.50 | QF.2 — Grabar evidencia en video del funcionamiento |  | 0.38d | 2026-09-16 | 2026-09-16 | 234 |  |  | Diana — Redactor técnico |
| 256 | 8.51 | QI.1 — Analizar resultados obtenidos durante las pruebas |  | 2d | 2026-09-14 | 2026-09-16 | 229, 230 |  |  | Diana — Analista e investigador |
| 257 | 8.52 | QI.2 — Redactar apartado de resultados del proyecto |  | 2d | 2026-09-16 | 2026-09-18 | 256 |  |  | Diana — Analista e investigador |
| 258 | 8.53 | QI.3 — Redactar conclusiones y limitaciones |  | 1d | 2026-09-18 | 2026-09-21 | 257 |  |  | Diana — Analista e investigador |
| 259 | 8.54 | QI.4 — Integrar todas las secciones del informe final |  | 2.5d | 2026-10-08 | 2026-10-13 | 93, 244, 257, 258, 94, 216, 240, 245, 246, 247, 248, 249, 250, 251 |  |  | Diana — Analista e investigador |
| 260 | 8.55 | QI.5 — Revisar redacción, ortografía, referencias y formato |  | 2.12d | 2026-10-13 | 2026-10-15 | 259, 241, 242, 243 |  |  | Diana — Analista e investigador |
| 261 | 8.56 | QB.1 — Generar build candidata a versión final |  | 1.38d | 2026-09-28 | 2026-09-29 | 233, 235, 236, 237, 238, 239 |  | start no later than 2026-09-28 | Diana — Desarrollador de realidad virtual |
| 262 | 8.57 | QB.2 — Probar build final en el visor VR objetivo |  | 0.88d | 2026-09-29 | 2026-09-29 | 261 |  | start no later than 2026-09-29 | Diana — Desarrollador de realidad virtual |
| 263 | 8.58 | QB.3 — Corregir errores críticos encontrados en build final |  | 0.38d | 2026-09-30 | 2026-09-30 | 262 |  | start no later than 2026-09-30 | Diana — Desarrollador de realidad virtual |
| 264 | 8.59 | QB.4 — Generar versión definitiva del videojuego |  | 0d | 2026-09-30 | 2026-09-30 | 263 |  | start no later than 2026-10-01 | Diana — Desarrollador de realidad virtual |
| 265 | 8.60 | QX — Preparar presentación y demostración final del proyecto |  | 1.88d | 2026-10-15 | 2026-10-19 | 259, 264, 252, 253, 254, 255, 260 |  | start no later than 2026-10-15 | Diana — Director de proyecto |

Notes:
- 223: [FUERA DE ALCANCE] Plan de pruebas del juego de ritmo. Se cubre con QT.7
- 224: [FUERA DE ALCANCE] Plan de pruebas de interfaz. Se cubre con QT.8
- 225: [FUERA DE ALCANCE] Plan de pruebas de audio. La latencia ya se midió con su protocolo
- 226: [FUERA DE ALCANCE] Plan de pruebas de rendimiento. Se cubre con QV.3
- 227: [HECHA 2026-10-17] 42 pruebas EditMode de bateria: CrossSolver 7, DrumPad 6, PadVisual 7, SampleSelector 8, HitIntensity 5, KitLayout 4, DrumHitFanout 2, EscenaRig 3
- 228: [HECHA 2026-10-17] 52 pruebas EditMode de ritmo: SessionStats 11, MusicalTime 8, TempoMap 8, HitJudge 7, HitRing 6, NoteMatcher 6, JuegoDeRitmo 6
- 236: [HECHA 2026-10-18] Misma corrida que AO.5, desde QA. 71.9 fps de media, mediana y p99 en 13.9 ms, que es el intervalo exacto de vsync a 72 Hz
- 237: [HECHA 2026-10-17] Hito Go/No-Go del acta, medido con el protocolo del clic fisico: p90 de +4.07 ms dentro de la ventana de -10 a +25 ms. Ocho corridas en entregables/mediciones/latencia_20261017_*.json. El desfase negativo es valido: la prediccion del plano armado adelanta el sonido
- 242: [HECHA 2026-10-18] Registro de assets y licencias en Assets/Entorno/ATRIBUCION.txt y entregables/ATRIBUCION_entorno.txt, con las restricciones de cada EULA
- 244: [FUERA DE ALCANCE] Documentación de arquitectura. YA EXISTEN la guía de 8 capítulos y los specs
- 245: [FUERA DE ALCANCE] Diagrama de flujo. Se cubre en el informe final
- 246: [FUERA DE ALCANCE] Documentar detección de golpes. Está en la guía y en el spec
- 247: [FUERA DE ALCANCE] Documentar el juego de ritmo. Está en su spec y su plan
- 248: [FUERA DE ALCANCE] Documentar intensidad. Está en la guía
- 249: [FUERA DE ALCANCE] Documentar el entorno. El entorno se recortó a integración
- 250: [FUERA DE ALCANCE] Documentar la música. Se cubre con MP.3
- 251: [FUERA DE ALCANCE] Documentar la interfaz. Se cubre en el informe final
- 254: [FUERA DE ALCANCE] Capturas de pantalla. Se obtienen al preparar QX
- 255: [FUERA DE ALCANCE] Video de evidencia. Misma razón
